# Предварительный план2007

Schedule from MS Project, 2013-04-22 to 2014-09-11, A marks actual dates.

## Calendars

- Стандартный: Mon-Fri 09:00-13:00, 14:00-18:00; Sat-Sun off. Exceptions (off unless hours are given): 2013-05-01 to 2013-05-05 (Первое мая), 2013-05-09 to 2013-05-12 (Девятое мая), 2013-12-30 to 2014-01-08 (новый год).

## Resources

| Resource |
| --- |
| Шилин Роман |
| Аналитик |
| Андрей Пирожков |
| Тугушев Илья |
| Денис Митавский |
| Алексей Львов |
| Андрей Карандей |
| Валерий Мацукевич |
| Java разработчик3 |
| Java разработчик4 |
| WEB-дизайнер |
| Влад Симоненко |
| Андрей Цветков |
| Java разработчик5 |
| Тест Аналитик |
| Java разработчик6 |
| Тестировщик |
| Технический писатель |
| Технолог - администратор |
| Технический писатель2 |
| Системный аналитик1 |
| Системный аналитик2 |
| Системный аналитик3 |
| Системный аналитик4 |
| Владимир Панов |
| Сергей Кашанский |
| Роман Митинков |
| Роман Болотов |
| Глеб Наздрачев |
| Евгения Капустина |
| Эдуард Михайлов |
| Тимофей Билый |
| (БТЛ) Михаил Ларин |
| (БТЛ) Олег Еренцов |
| (БТЛ) Дмитрий Лякин |
| (БТЛ)Сергей Степыгин |
| Ярослав Бондарчук |
| Александр Власюк |
| Глеб Наздрачевту |

## Schedule

| ID | WBS | Task | Type | Duration | Start | Finish | Predecessors | Complete | Remaining | Total slack | Free slack | Constraint | Resources | Work | Actual work |
| --- | --- | --- | --- | --- | --- | --- | --- | --- | --- | --- | --- | --- | --- | --- | --- |
| 1 | 1 | **Разработка версии CM4/5** |  | 351d? | 2013-04-22 A | 2014-09-11 |  | 25% | 263.92d? | 0d |  |  |  | 26085.8h | 5779.16h |
| 2 | 1.1 | Принято решение о начале разработки | milestone | 0d | 2013-04-22 | 2013-04-22 |  |  |  | 0d |  | start no earlier than 2013-04-22 |  |  |  |
| 3 | 1.2 | Управление проектом |  | 267d | 2013-04-22 A | 2014-05-16 | 2 | 35% | 173.55d | 84d |  |  | Шилин Роман | 2136h | 747.6h |
| 4 | 1.3 | **Управление требованиями** |  | 331d | 2013-05-27 A | 2014-09-11 | 2 | 19% | 268.4d | 0d |  |  | Аналитик | 4567.2h | 1034.44h |
| 5 | 1.3.1 | Выделен аналитик на проект | milestone | 0d | 2013-05-27 A | 2013-05-27 A |  | 100% |  |  |  | start no earlier than 2013-05-27 |  |  |  |
| 6 | 1.3.2 | Формирование скоупа проекта _ верхний уровень |  | 15d | 2013-05-27 A | 2013-06-14 A | 5 | 100% |  |  |  |  | Евгения Капустина | 120h | 120h |
| 7 | 1.3.3 | Скоуп на систему сформирован и утвержден | milestone | 0d | 2013-06-21 A | 2013-06-21 A | 6FS+5d | 100% |  |  |  |  |  |  |  |
| 8 | 1.3.4 | Сопровождение требований |  | 311d | 2013-06-24 A | 2014-09-11 | 5, 7 | 15% | 264.35d | 0d |  |  | Эдуард Михайлов; Евгения Капустина | 1799.2h | 503.8h |
| 9 | 1.4 | **Создание модуля "Делопроизводство" (документоориентированная среда)** |  | 274d? | 2013-04-22 A | 2014-05-27 |  | 24% | 207.23d? | 77d |  |  |  | 19382.6h | 3997.12h |
| 10 | 1.4.1 | Первичные требования для создания модуля "Делопроизводство" подготовлены | milestone | 0d | 2013-04-22 | 2013-04-22 | 2 |  |  | 0d |  | finish no earlier than 2012-04-02 |  |  |  |
| 11 | 1.4.2 | **Апробация идей прототипа** |  | 24d | 2013-04-29 A | 2013-06-06 |  | 99% | 0d | 322d |  |  |  | 144h | 144h |
| 12 | 1.4.2.1 | Пирожков доступен | milestone | 0d | 2013-06-03 | 2013-06-03 |  |  |  | 326d |  | start no earlier than 2013-06-03 |  |  |  |
| 13 | 1.4.2.2 | Проведение предварительных испытаний системы |  | 9d | 2013-04-29 A | 2013-05-16 A | 10FS+5d | 100% |  |  |  |  | Андрей Цветков | 72h | 72h |
| 14 | 1.4.2.3 | Описание обработки ВХ. Док. На примере технологий прототипа |  | 9d | 2013-05-20 A | 2013-06-06 A |  | 100% |  |  |  | start no earlier than 2013-05-20 | Андрей Пирожков | 72h | 72h |
| 15 | 1.4.3 | **Настройка инфраструктуры** |  | 37d | 2013-05-20 A | 2013-07-09 | 24 | 67% | 12.33d | 110.27d | 0d |  |  | 120h | 80h |
| 16 | 1.4.3.1 | Настройка непрерывной интеграции |  | 4d | 2013-05-20 A | 2013-05-23 A |  | 100% |  |  |  |  | Тугушев Илья | 32h | 32h |
| 17 | 1.4.3.2 | Поддержка UNIT-тестирования и интеграционного тестирования на уроне среды непрерывной интеграции |  | 5d | 2013-06-04 | 2013-06-10 |  |  |  | 131.27d |  | start no earlier than 2013-06-04 | Тугушев Илья | 40h |  |
| 18 | 1.4.3.3 | Репакеджинг проекта |  | 3d | 2013-05-27 A | 2013-05-29 A |  | 100% |  |  |  | start no earlier than 2013-05-27 | Сергей Кашанский | 24h | 24h |
| 19 | 1.4.3.4 | Автоматическое заполнение параметров JDBC через Maven |  | 3d | 2013-07-05 A | 2013-07-09 A | 30 | 100% |  |  |  |  | Андрей Цветков | 24h | 24h |
| 20 | 1.4.4 | **Проектирование и формирование ядра системы** |  | 194d? | 2013-04-22 A | 2014-02-04 | 10 | 36% | 123.88d? | 89d | 0d |  |  | 9258.64h | 3086.72h |
| 21 | 1.4.4.1 | **Определение структуры модуля Делопроизводство** |  | 25d | 2013-04-22 A | 2013-05-31 A |  | 100% |  |  |  |  |  | 352h | 352h |
| 22 | 1.4.4.1.1 | Разбивка на слои |  | 5d | 2013-04-22 A | 2013-04-26 A |  | 100% |  |  |  |  | Денис Митавский [50%]; Андрей Пирожков [50%] | 40h | 40h |
| 23 | 1.4.4.1.2 | Конфигурации, загрузка и инициализация системы в базовой конфигурации |  | 5d | 2013-04-29 A | 2013-05-08 A | 22 | 100% |  |  |  |  | Валерий Мацукевич; Денис Митавский [50%] | 60h | 60h |
| 24 | 1.4.4.1.3 | Базовая конфигурация объектов системы |  | 5d | 2013-05-13 A | 2013-05-17 A | 22, 23 | 100% |  |  |  |  | Денис Митавский [50%]; Валерий Мацукевич | 60h | 60h |
| 25 | 1.4.4.1.4 | Юнит-тестирование - базис |  | 6d | 2013-05-17 A | 2013-05-24 A | 13 | 100% |  |  |  |  | Денис Митавский [50%]; Андрей Цветков | 72h | 72h |
| 26 | 1.4.4.1.5 | Базовая имплементация слоя DAO |  | 5d | 2013-05-20 A | 2013-05-24 A | 24 | 100% |  |  |  |  | Валерий Мацукевич | 40h | 40h |
| 27 | 1.4.4.1.6 | Обеспечение программных компонет верификации первой очереди |  | 5d | 2013-05-27 A | 2013-05-31 A | 26 | 100% |  |  |  |  | Валерий Мацукевич; Андрей Цветков | 80h | 80h |

Notes:
- 27: UNIT тестирование в рамках наработанного кода

| ID | WBS | Task | Type | Duration | Start | Finish | Predecessors | Complete | Remaining | Total slack | Free slack | Constraint | Resources | Work | Actual work |
| --- | --- | --- | --- | --- | --- | --- | --- | --- | --- | --- | --- | --- | --- | --- | --- |
| 28 | 1.4.4.2 | **DAO** |  | 43d? | 2013-06-03 A | 2013-07-31 A | 26, 27 | 100% |  |  |  |  |  | 224h | 224h |
| 29 | 1.4.4.2.1 | DAO для бизнес-объектов |  | 7d | 2013-06-03 A | 2013-06-11 A |  | 100% |  |  |  |  | Валерий Мацукевич | 56h | 56h |
| 30 | 1.4.4.2.2 | DAO для коллекций |  | 13d | 2013-06-12 A | 2013-07-04 A | 29 | 100% |  |  |  |  | Андрей Цветков | 104h | 104h |
| 31 | 1.4.4.2.3 | Функционал системы готов для проведения проектирования интеграции с GUI СМ4 | milestone | 0d | 2013-06-24 A | 2013-06-24 A | 29, 30 | 100% |  |  |  |  |  |  |  |
| 32 | 1.4.4.2.4 | DAO - утилитарные поля |  | 6d | 2013-06-25 A | 2013-07-08 A | 30 | 100% |  |  |  |  | Денис Митавский [50%] | 24h | 24h |
| 33 | 1.4.4.2.5 | DAO - кэш уровня транзакции |  | 5d? | 2013-07-25 A | 2013-07-31 A | 125 | 100% |  |  |  |  | Влад Симоненко | 40h | 40h |
| 34 | 1.4.4.3 | CRUD-сервис для бизнес-объектов |  | 10d | 2013-06-11 A | 2013-06-24 A | 30FF | 100% |  |  |  |  | Андрей Цветков | 80h | 80h |
| 35 | 1.4.4.4 | Расширение CRUD для интеграции с CMJ |  | 5d | 2013-08-08 A | 2013-08-14 A |  | 100% |  |  |  | start no earlier than 2013-08-08 | Андрей Карандей | 40h | 40h |
| 36 | 1.4.4.5 | Поддержка отсортированных дочерних бизнес-объектов |  | 5d | 2013-08-21 | 2013-08-27 | 53 |  |  | 21.14d | 0d |  | Валерий Мацукевич | 40h |  |
| 37 | 1.4.4.6 | Настройка Datasources/Jaas сервера приложений средствами Maven |  | 2d | 2013-07-05 A | 2013-07-08 A | 30 | 100% |  |  |  |  | Сергей Кашанский | 16h | 16h |
| 38 | 1.4.4.7 | Рефакторинг |  | 4d | 2013-07-03 A | 2013-07-08 A | 26 | 100% |  |  |  | start no earlier than 2013-07-03 | Валерий Мацукевич | 32h | 32h |
| 39 | 1.4.4.8 | **Права доступа** |  | 65d | 2013-06-12 A | 2013-09-10 |  | 90% | 6.54d | 186d |  |  |  | 488h | 426.8h |
| 40 | 1.4.4.8.1 | Права - оптимизация хранения (проектирование) |  | 30d | 2013-06-12 A | 2013-07-23 A | 29 | 100% |  |  |  |  | Андрей Пирожков [50%] | 120h | 120h |
| 41 | 1.4.4.8.2 | Описание существующими декларативными средствами конфигурации |  | 19d | 2013-07-16 A | 2013-08-09 A | 40, 19 | 100% |  |  |  |  | Андрей Цветков | 152h | 152h |
| 42 | 1.4.4.8.3 | Автофильтрация |  | 10d | 2013-07-29 A | 2013-08-16 A | 41 | 100% |  |  |  |  | Андрей Цветков | 80h | 80h |
| 43 | 1.4.4.8.4 | Пересчёт прав доступа |  | 17d | 2013-08-19 A | 2013-09-10 | 42 | 55% | 7.65d | 186d |  |  | Андрей Цветков | 136h | 74.8h |
| 44 | 1.4.4.9 | **Workflow - интеграция с Activiti** |  | 91d | 2013-06-07 A | 2013-10-11 | 14 | 20% | 72.99d | 83d | 0d |  |  | 344h | 38h |
| 45 | 1.4.4.9.1 | Проектирование |  | 10d | 2013-06-07 A | 2013-07-24 | 40 | 95% | 0.5d | 120d | 37d |  | Андрей Пирожков [50%] | 40h | 38h |
| 46 | 1.4.4.9.2 | готова постановка по БП | milestone | 0d | 2013-09-09 | 2013-09-09 |  |  |  | 88d | 5d | start no earlier than 2013-09-09 |  |  |  |
| 47 | 1.4.4.9.3 | Разработка |  | 20d | 2013-09-16 | 2013-10-11 | 45, 46 |  |  | 83d |  | start no earlier than 2013-09-16 | (БТЛ) Михаил Ларин | 160h |  |
| 48 | 1.4.4.9.4 | **Действия** |  | 18d | 2013-09-18 | 2013-10-11 |  |  |  | 83d |  |  |  | 144h |  |
| 49 | 1.4.4.9.4.1 | Концепция/Архитектура |  | 4d | 2013-09-18 | 2013-09-23 | 152 |  |  | 83d | 0d | start no earlier than 2013-09-16 | Денис Митавский | 32h |  |
| 50 | 1.4.4.9.4.2 | Реализация |  | 14d | 2013-09-24 | 2013-10-11 | 49 |  |  | 83d |  |  | (БТЛ) Михаил Ларин | 112h |  |
| 51 | 1.4.4.10 | **Наследование ???** |  | 8d | 2013-08-09 A | 2013-08-20 A | 45 | 100% |  |  |  |  | Андрей Пирожков [50%] | 88h | 88h |
| 52 | 1.4.4.10.1 | Проектирование функции "Наследование" |  | 2d | 2013-08-09 A | 2013-08-12 A |  | 100% |  |  |  | finish no earlier than 2013-08-12 | Андрей Пирожков | 16h | 16h |
| 53 | 1.4.4.10.2 | Разработка функции "Наследование" |  | 6d | 2013-08-13 A | 2013-08-20 A | 52 | 100% |  |  |  |  | Валерий Мацукевич | 48h | 48h |

Notes:
- 34: - проектирование базового API / - имплементация
- 36: Для отображени и поддержания заданного порядка следования объектов
- 40: Права доступа - оптимизация подхода, / подбор других названий сущностей (таблицы) переименовать таблицы и улучшить производительность
- 41: Права доступа - описание существующими декларативными средствами конфигурации / (для автоматического создания таблиц) + / конфигурирование под-запроса для фильтрации - там же
- 42: Права доступа - авто-фильтрация / + "внедрение в под-запросы"
- 44: Задачи: / - модель процесса (BPMN) / - Имплементация WF - сервиса , взаимодействие системы с Аctiviti
- 51: Архитектура - форма хранения данных (с учетом производительности) / Наследование типов объектов - уровень DAO

| ID | WBS | Task | Type | Duration | Start | Finish | Predecessors | Complete | Remaining | Total slack | Free slack | Constraint | Resources | Work | Actual work |
| --- | --- | --- | --- | --- | --- | --- | --- | --- | --- | --- | --- | --- | --- | --- | --- |
| 54 | 1.4.4.11 | **Коллекции** |  | 103d | 2013-05-29 A | 2013-10-18 |  | 56% | 45.06d | 125d |  |  |  | 300h | 188h |
| 55 | 1.4.4.11.1 | Коллекции - конфигурация |  | 3d | 2013-05-29 A | 2013-05-31 A |  | 100% |  |  |  |  | Денис Митавский | 24h | 24h |
| 56 | 1.4.4.11.2 | DAO - язык запросов коллекций |  | 12d | 2013-05-29 A | 2013-06-17 A | 55 | 100% |  |  |  |  | Сергей Кашанский; Денис Митавский [50%] | 140h | 140h |
| 57 | 1.4.4.11.3 | Сервис получения и получения счетчиков |  | 3d | 2013-05-29 A | 2013-05-31 A | 55 | 100% |  |  |  |  | Сергей Кашанский | 24h | 24h |
| 58 | 1.4.4.11.4 | Принято решение о работе с ПКД | milestone | 0d | 2013-10-01 | 2013-10-01 |  |  |  | 125d | 0d | start no earlier than 2013-10-01 | Денис Митавский [50%] |  |  |
| 59 | 1.4.4.11.5 | ПКД ???? |  | 14d | 2013-10-01 | 2013-10-18 | 56, 51, 58 |  |  | 125d | 0d |  | Валерий Мацукевич | 112h |  |
| 60 | 1.4.4.12 | **Бизнес-объекты (иерархии доменных объектов)** |  | 35.25d | 2013-07-24 A | 2013-09-11 A |  | 100% |  |  |  |  |  | 140.8h | 140.8h |
| 61 | 1.4.4.12.1 | Проектирование |  | 8d | 2013-07-24 A | 2013-08-16 A | 62SF, 52 | 100% |  |  |  |  | Андрей Пирожков [20%] | 12.8h | 12.8h |
| 62 | 1.4.4.12.2 | Реализация1 |  | 3d | 2013-07-31 A | 2013-08-02 A | 150SF | 100% |  |  |  |  | Андрей Пирожков | 24h | 24h |
| 63 | 1.4.4.12.3 | Подготовка описания по обновленным принциапам работы |  | 13d | 2013-08-16 A | 2013-09-11 A | 61 | 100% |  |  |  |  | Андрей Пирожков | 104h | 104h |
| 64 | 1.4.4.13 | **Поиск** |  | 56d | 2013-07-30 A | 2013-10-15 | 34 | 10% | 50.4d | 161d |  |  |  | 380h | 48h |
| 65 | 1.4.4.13.1 | Идея поиска оформлена | milestone | 0d | 2013-09-09 | 2013-09-09 |  |  |  | 87d | 0d | finish no earlier than 2013-09-09 |  |  |  |
| 66 | 1.4.4.13.2 | Поиск |  | 15d | 2013-07-30 A | 2013-09-24 | 65 | 27% | 11d | 161d | 0d |  | Андрей Пирожков [50%]; Андрей Цветков | 180h | 48h |
| 67 | 1.4.4.13.3 | Полнотекстовый поиск |  | 25d | 2013-09-11 | 2013-10-15 | 65, 66FS-10d |  |  | 161d |  |  | Валерий Мацукевич | 200h |  |
| 68 | 1.4.4.14 | **Слой сопряжения GUI CM4** |  | 110.25d? | 2013-08-05 A | 2014-01-16 |  | 15% | 93.52d? | 102.75d |  |  |  | 1897.84h | 326.72h |
| 69 | 1.4.4.14.1 | Решение принято и ресурсы достуны | milestone | 0d | 2013-08-05 A | 2013-08-05 A |  | 100% |  |  |  | start no earlier than 2013-08-05 |  |  |  |
| 70 | 1.4.4.14.2 | Реализация коннекторов к платформе |  | 97.25d | 2013-08-08 A | 2013-12-23 | 69FS+3d | 29% | 69.25d | 102.75d | 0d |  | Тугушев Илья [75%]; Глеб Наздрачев | 1120h | 326.48h |
| 71 | 1.4.4.14.3 | Описание решения есть. Можно начинать разработку | milestone | 0d | 2013-08-28 A | 2013-08-28 A |  | 100% |  |  |  | start no earlier than 2013-08-28 |  |  |  |
| 72 | 1.4.4.14.4 | Проработка задания выполнена, можно привлекать разработчиков БТЛ | milestone | 0d | 2013-09-18 A | 2013-09-18 A |  | 100% |  |  |  | start no earlier than 2013-09-18 |  |  |  |
| 73 | 1.4.4.14.5 | Рефакторинг СМ 4.2.1 выполнен | milestone | 0d | 2013-09-30 A | 2013-09-30 |  | 80% | 0d | 172d |  | finish no earlier than 2013-09-30 |  |  |  |
| 74 | 1.4.4.14.6 | Структура хранения определена | milestone | 0d | 2013-10-28 | 2013-10-28 |  |  |  | 127d | 2d | finish no earlier than 2013-10-28 |  |  |  |
| 75 | 1.4.4.14.7 | Проектирование завершено - готовность к интеграции | milestone | 0d | 2013-09-23 | 2013-09-23 |  |  |  | 0d |  | start no earlier than 2013-09-23 |  |  |  |
| 76 | 1.4.4.14.8 | **Интеграция с CMJ по Внутренним Документам** |  | 23d? | 2013-09-23 A | 2013-10-23 | 75 | 3% | 22.29d? | 155d |  |  |  | 688.24h | 0.24h |
| 77 | 1.4.4.14.8.1 | MapperBuilder |  | 8d | 2013-09-23 | 2013-10-02 |  |  |  | 157d | 0d |  | Александр Власюк | 64h |  |
| 78 | 1.4.4.14.8.2 | Конфиг ДОП СС |  | 1d | 2013-09-25 A | 2013-09-26 A |  | 100% |  |  |  |  | Глеб Наздрачев [1%] | 0.08h | 0.08h |
| 79 | 1.4.4.14.8.3 | Mapper СС |  | 2d | 2013-10-03 | 2013-10-04 | 77, 78 |  |  | 165d | 8d |  | Александр Власюк | 16h |  |
| 80 | 1.4.4.14.8.4 | Конфиг ДОП Каталога |  | 3.75d? | 2013-09-24 | 2013-09-27 |  |  |  | 156d | 0d | start no earlier than 2013-09-24 | Глеб Наздрачев [80%] | 24h |  |
| 81 | 1.4.4.14.8.5 | Mapper Каталога |  | 2d | 2013-10-03 | 2013-10-04 | 77, 80 |  |  | 157d | 0d |  | Александр Власюк | 16h |  |
| 82 | 1.4.4.14.8.6 | Конфиг ДОП Портала |  | 3.75d? | 2013-09-25 | 2013-09-30 |  |  |  | 155d | 0d | start no earlier than 2013-09-25 | Тугушев Илья [80%] | 24h |  |
| 83 | 1.4.4.14.8.7 | Mapper Портала |  | 2d | 2013-10-07 | 2013-10-08 | 77, 82, 81 |  |  | 157d | 0d |  | Александр Власюк | 16h |  |
| 84 | 1.4.4.14.8.8 | Конфиг ДОП СО |  | 1d | 2013-09-23 A | 2013-09-23 A |  | 100% |  |  |  |  | Глеб Наздрачев [1%] | 0.08h | 0.08h |
| 85 | 1.4.4.14.8.9 | Maper СО |  | 2d | 2013-10-09 | 2013-10-10 | 77, 84, 83 |  |  | 157d | 0d |  | Александр Власюк | 16h |  |
| 86 | 1.4.4.14.8.10 | Конфиг ДОП ВнД |  | 3.75d? | 2013-09-27 | 2013-10-03 | 80 |  |  | 156d | 0d |  | Глеб Наздрачев [80%] | 24h |  |
| 87 | 1.4.4.14.8.11 | Mapper ВнД |  | 2d | 2013-10-11 | 2013-10-14 | 77, 86, 85 |  |  | 157d | 0d |  | Александр Власюк | 16h |  |
| 88 | 1.4.4.14.8.12 | Кофиг ДОП СпО |  | 1d | 2013-09-23 A | 2013-09-23 A |  | 100% |  |  |  |  | Глеб Наздрачев [1%] | 0.08h | 0.08h |
| 89 | 1.4.4.14.8.13 | Mapper СпО |  | 2d | 2013-10-15 | 2013-10-16 | 77, 88, 87 |  |  | 157d | 0d |  | Александр Власюк | 16h |  |
| 90 | 1.4.4.14.8.14 | Аутентификация |  | 3d? | 2013-09-30 | 2013-10-02 |  |  |  | 161d | 0d | start no earlier than 2013-09-30 | Влад Симоненко | 24h |  |
| 91 | 1.4.4.14.8.15 | Вложения |  | 3d? | 2013-10-03 | 2013-10-07 | 90 |  |  | 161d | 0d |  | Влад Симоненко | 24h |  |
| 92 | 1.4.4.14.8.16 | Форматированный текст |  | 3d? | 2013-10-08 | 2013-10-10 | 91 |  |  | 161d | 4d |  | Влад Симоненко | 24h |  |
| 93 | 1.4.4.14.8.17 | Настраиваемые коллекции |  | 3d? | 2013-10-03 | 2013-10-08 | 86 |  |  | 156d | 0d |  | Глеб Наздрачев | 24h |  |
| 94 | 1.4.4.14.8.18 | Задание по View и Session поставлена | milestone | 0d | 2013-09-30 | 2013-09-30 |  |  |  | 157d | 0d | start no earlier than 2013-09-30 |  |  |  |
| 95 | 1.4.4.14.8.19 | Адаптеры View, Databse, Document, Session |  | 13d | 2013-09-30 | 2013-10-16 | 94 |  |  | 157d | 0d |  | (БТЛ) Олег Еренцов; (БТЛ) Дмитрий Лякин | 208h |  |
| 96 | 1.4.4.14.8.20 | Задание по Database и Document поставлена | milestone | 0d | 2013-10-04 | 2013-10-04 | 94FS+5d |  |  | 168d |  |  |  |  |  |

Notes:
- 56: DAO - язык запросов коллекций
- 57: Коллекции - сервис получения и получения счетчиков
- 58: Используя язык запросов коллеций
- 59: Для поддержания реализации избранного, отметок о прочтении и т.д.
- 67: Включая взаимодействие с Solr
- 70: Начальная реализация модуля "документооборот" - замена лотуса

| ID | WBS | Task | Type | Duration | Start | Finish | Predecessors | Complete | Total slack | Free slack | Constraint | Resources | Work | Actual work |
| --- | --- | --- | --- | --- | --- | --- | --- | --- | --- | --- | --- | --- | --- | --- |
| 97 | 1.4.4.14.8.21 | **Разработка коллекций** |  | 14.25d? | 2013-09-30 | 2013-10-18 |  |  | 155d |  |  |  | 144h |  |
| 98 | 1.4.4.14.8.21.1 | Коллекции Портала |  | 3d? | 2013-09-30 | 2013-10-03 | 82 |  | 155d | 0d |  | Тугушев Илья | 24h |  |
| 99 | 1.4.4.14.8.21.2 | Коллекции СС |  | 3.75d? | 2013-10-08 | 2013-10-14 | 93 |  | 156d | 0d |  | Глеб Наздрачев [80%] | 24h |  |
| 100 | 1.4.4.14.8.21.3 | Коллекции Каталога |  | 3.75d? | 2013-10-14 | 2013-10-17 | 99 |  | 156d | 0d |  | Глеб Наздрачев [80%] | 24h |  |
| 101 | 1.4.4.14.8.21.4 | Коллекции СО |  | 3.75d? | 2013-10-03 | 2013-10-09 | 98 |  | 155d | 0d |  | Тугушев Илья [80%] | 24h |  |
| 102 | 1.4.4.14.8.21.5 | Коллекции ВнД |  | 3.75d? | 2013-10-09 | 2013-10-15 | 101 |  | 155d | 0d |  | Тугушев Илья [80%] | 24h |  |
| 103 | 1.4.4.14.8.21.6 | Коллекции СпО |  | 3.75d? | 2013-10-15 | 2013-10-18 | 102 |  | 155d | 0d |  | Тугушев Илья [80%] | 24h |  |
| 104 | 1.4.4.14.8.22 | ВнД | milestone | 0d | 2013-10-18 | 2013-10-18 | 99, 79, 100, 81, 98, 83, 101, 85, 102, 87, 103, 89, 90, 91, 92, 93, 95 |  | 155d | 0d |  |  |  |  |
| 105 | 1.4.4.14.8.23 | Объединение War |  | 1d | 2013-10-21 | 2013-10-21 | 104 |  | 157d |  |  | Тугушев Илья | 8h |  |
| 106 | 1.4.4.14.8.24 | **Инструмент заполнения** |  | 3d? | 2013-10-21 | 2013-10-23 | 104 |  | 155d |  |  |  |  |  |
| 107 | 1.4.4.14.8.24.1 | Инструмент заполнения Каталога |  | 3d? | 2013-10-21 | 2013-10-23 |  |  | 155d |  |  |  |  |  |
| 108 | 1.4.4.14.8.24.2 | Инструмент заполнения СС |  | 3d? | 2013-10-21 | 2013-10-23 |  |  | 155d |  |  |  |  |  |
| 109 | 1.4.4.14.8.24.3 | Инструмент заполнения Портала |  | 3d? | 2013-10-21 | 2013-10-23 |  |  | 155d |  |  |  |  |  |
| 110 | 1.4.4.14.8.24.4 | Инструмент заполнения СО |  | 3d? | 2013-10-21 | 2013-10-23 |  |  | 155d |  |  |  |  |  |
| 111 | 1.4.4.14.8.24.5 | Инструмент заполнения СпО |  | 3d? | 2013-10-21 | 2013-10-23 |  |  | 155d |  |  |  |  |  |
| 112 | 1.4.4.14.9 | Сопряжение - работа с вложениями |  | 7d | 2013-12-23 | 2014-01-13 | 70, 125 |  | 102.75d | 0d |  | Влад Симоненко | 56h |  |
| 113 | 1.4.4.14.10 | Основные коннеторы реализованы | milestone | 0d | 2013-12-09 | 2013-12-09 |  |  | 98d | 0d | start no earlier than 2013-12-09 |  |  |  |
| 114 | 1.4.4.14.11 | REST-протокол для АРМа - проектирование |  | 3d | 2014-01-13 | 2014-01-16 | 31, 112 |  | 102.75d |  |  | Тугушев Илья; Денис Митавский [20%]; Андрей Пирожков [20%] | 33.6h |  |
| 115 | 1.4.4.15 | **Проверка работоспособности решения - Организация демонстрации** |  | 25d? | 2013-12-09 | 2014-01-22 | 113 |  | 98d |  |  |  | 448h |  |
| 116 | 1.4.4.15.1 | Подготовка стенда |  | 3d | 2013-12-09 | 2013-12-11 | 117SF |  | 120d |  |  | Влад Симоненко; Аналитик | 48h |  |
| 117 | 1.4.4.15.2 | Подготовка прототипа |  | 20d? | 2013-12-09 | 2014-01-15 |  |  | 98d | 0d |  | Влад Симоненко; Аналитик | 320h |  |
| 118 | 1.4.4.15.3 | Проведение демонстраций |  | 3d | 2014-01-16 | 2014-01-20 | 117 |  | 98d | 0d |  | Влад Симоненко; Аналитик | 48h |  |
| 119 | 1.4.4.15.4 | Анализ результатов - выводы |  | 2d | 2014-01-21 | 2014-01-22 | 118 |  | 98d |  |  | Влад Симоненко; Аналитик | 32h |  |
| 120 | 1.4.4.16 | **Сервис работы с вложениями** |  | 22d | 2013-07-11 A | 2013-08-09 A |  | 100% |  |  |  |  | 176h | 176h |
| 121 | 1.4.4.16.1 | Принято решение о проектировании сервиса обработки вложений | milestone | 0d | 2013-07-11 A | 2013-07-11 A |  | 100% |  |  | start no earlier than 2013-07-11 |  |  |  |
| 122 | 1.4.4.16.2 | API |  | 5d | 2013-07-11 A | 2013-07-17 A | 121 | 100% |  |  |  | Андрей Цветков | 40h | 40h |
| 123 | 1.4.4.16.3 | Реализация |  | 7d | 2013-07-18 A | 2013-07-26 A | 122 | 100% |  |  |  | Влад Симоненко | 56h | 56h |
| 124 | 1.4.4.16.4 | Исследования по перехватчику конца транзакции |  | 5d | 2013-07-29 A | 2013-08-02 A | 123 | 100% |  |  |  | Влад Симоненко | 40h | 40h |
| 125 | 1.4.4.16.5 | Чистка файлов в случае отката транзакции |  | 5d | 2013-08-05 A | 2013-08-09 A | 124 | 100% |  |  |  | Влад Симоненко | 40h | 40h |

| ID | WBS | Task | Type | Duration | Start | Finish | Predecessors | Complete | Remaining | Total slack | Free slack | Constraint | Resources | Work | Actual work |
| --- | --- | --- | --- | --- | --- | --- | --- | --- | --- | --- | --- | --- | --- | --- | --- |
| 126 | 1.4.4.17 | **Работа с отчетами** |  | 48d | 2013-09-30 | 2013-12-04 |  |  |  | 125d |  |  |  | 276h |  |
| 127 | 1.4.4.17.1 | Система готова к интеграции с модулем отчетов | milestone | 0d | 2013-09-30 | 2013-09-30 |  |  |  | 140d | 15d | start no earlier than 2013-09-30 | Денис Митавский [50%]; Андрей Цветков |  |  |
| 128 | 1.4.4.17.2 | JDBC-драйвер для системы построения отчётов |  | 8d | 2013-10-21 | 2013-10-30 | 59, 127 |  |  | 125d | 0d |  | Денис Митавский [50%]; Андрей Цветков | 96h |  |
| 129 | 1.4.4.17.3 | Интеграция с Jasper Reports |  | 15d | 2013-10-31 | 2013-11-20 | 128, 74 |  |  | 125d | 0d |  | Денис Митавский [50%]; Андрей Цветков | 180h |  |
| 130 | 1.4.4.17.4 | GUI - отображение отчётов |  | 10d | 2013-11-21 | 2013-12-04 | 129 |  |  | 125d |  |  |  |  |  |
| 131 | 1.4.4.18 | **GUI** |  | 161d? | 2013-04-22 A | 2013-12-09 |  | 43% | 91.8d? | 120d | 0d |  |  | 2056h | 838.4h |
| 132 | 1.4.4.18.1 | Принято решение о применении GWT-компонентов | milestone | 0d | 2013-07-22 A | 2013-07-22 A |  | 100% |  |  |  | start no earlier than 2013-07-22 |  |  |  |
| 133 | 1.4.4.18.2 | Адаптация компонентов GUI из СМ4 для наложения на архитектуру см5 |  | 40d | 2013-07-22 A | 2013-09-16 | 132 | 75% | 10d | 180d |  | start no earlier than 2013-07-11 | Тимофей Билый; Алексей Львов | 640h | 480h |
| 134 | 1.4.4.18.3 | Изучение GWT/Настройка CMJ 4 для дебага |  | 4d | 2013-08-05 A | 2013-08-08 A |  | 100% |  |  |  | start no earlier than 2013-08-05 | Андрей Карандей | 32h | 32h |
| 135 | 1.4.4.18.4 | Разработка базовой архитектуры GUI на основе GWT-компонентов |  | 3d | 2013-07-22 A | 2013-07-24 A | 132 | 100% |  |  |  |  | Денис Митавский | 24h | 24h |
| 136 | 1.4.4.18.5 | Интеграция с JAAS/Аутентификация |  | 5d | 2013-07-31 A | 2013-08-06 A | 135 | 100% |  |  |  | start no earlier than 2013-07-08 | Денис Митавский | 40h | 40h |
| 137 | 1.4.4.18.6 | Архитектура разметки главного экрана |  | 2d | 2013-08-07 A | 2013-08-08 A | 136 | 100% |  |  |  |  | Денис Митавский [50%] | 8h | 8h |
| 138 | 1.4.4.18.7 | **Панель навигации** |  | 29d | 2013-08-09 A | 2013-09-18 |  | 85% | 4.35d | 173d |  |  |  | 56h | 46.4h |
| 139 | 1.4.4.18.7.1 | Проектирование - панель навигации |  | 2d | 2013-08-09 A | 2013-08-12 A | 137 | 100% |  |  |  |  | Денис Митавский [50%] | 8h | 8h |
| 140 | 1.4.4.18.7.2 | Разработка - панель навигации |  | 6d | 2013-09-11 A | 2013-09-18 | 139, 142 | 80% | 1.2d | 173d | 0d |  | Андрей Карандей | 48h | 38.4h |
| 141 | 1.4.4.18.8 | GUI - архитектура плагинов/дочерних плагинов. Базис |  | 15d | 2013-08-13 A | 2013-09-03 A | 139 | 100% |  |  |  |  | Денис Митавский | 120h | 120h |
| 142 | 1.4.4.18.9 | Базовая реализация архитектуры плагинов |  | 5d | 2013-09-04 A | 2013-09-10 A | 141 | 100% |  |  |  |  | Андрей Карандей | 40h | 40h |
| 143 | 1.4.4.18.10 | **GUI - плагин отображения коллекций** |  | 15d | 2013-09-04 | 2013-09-24 | 141 |  |  | 163d |  |  |  | 64h |  |
| 144 | 1.4.4.18.10.1 | Проектирование |  | 2d | 2013-09-04 | 2013-09-05 | 141 |  |  | 163d | 0d |  | Денис Митавский | 16h |  |
| 145 | 1.4.4.18.10.2 | Разработка |  | 6d | 2013-09-17 | 2013-09-24 | 151 |  |  | 174d |  |  | Ярослав Бондарчук | 48h |  |
| 146 | 1.4.4.18.11 | **GUI - действия** |  | 96d | 2013-04-22 A | 2013-09-09 |  | 13% | 84d | 162d | 0d |  |  | 8h | 4h |
| 147 | 1.4.4.18.11.1 | Проектирование |  | 2d | 2013-09-06 A | 2013-09-09 | 144 | 50% | 1d | 162d |  |  | Денис Митавский [50%] | 8h | 4h |
| 148 | 1.4.4.18.11.2 | Разработка |  | 6d | 2013-04-22 | 2013-04-29 |  |  |  | 252d |  |  |  |  |  |
| 149 | 1.4.4.18.12 | **Формы встроенного GUI** |  | 15d | 2013-09-10 A | 2013-09-30 |  | 38% | 9.38d | 170d |  |  |  | 124h | 44h |
| 150 | 1.4.4.18.12.1 | Конфигурация-архитектура |  | 1d | 2013-09-10 A | 2013-09-10 A | 147 | 100% |  |  |  |  | Денис Митавский [50%] | 4h | 4h |
| 151 | 1.4.4.18.12.2 | Маппинг на объекты |  | 2d | 2013-09-13 A | 2013-09-16 A | 150 | 100% |  |  |  |  | Ярослав Бондарчук | 16h | 16h |
| 152 | 1.4.4.18.12.3 | API GWT client-server |  | 3d | 2013-09-13 A | 2013-09-17 A | 150 | 100% |  |  |  |  | Денис Митавский | 24h | 24h |
| 153 | 1.4.4.18.12.4 | Реализация чтения |  | 5d | 2013-09-24 | 2013-09-30 | 49 |  |  | 120d | 0d |  | Денис Митавский | 40h |  |
| 154 | 1.4.4.18.12.5 | Реализация сохранения |  | 5d | 2013-09-19 | 2013-09-25 | 140, 152 |  |  | 173d |  |  | Андрей Карандей | 40h |  |

Notes:
- 127: Используя язык запросов коллеций
- 128: Используя язык запросов коллеций

| ID | WBS | Task | Duration | Start | Finish | Predecessors | Complete | Remaining | Total slack | Free slack | Resources | Work | Actual work |
| --- | --- | --- | --- | --- | --- | --- | --- | --- | --- | --- | --- | --- | --- |
| 155 | 1.4.4.18.13 | **GUI - поиск** | 11d | 2013-10-01 | 2013-10-15 |  |  |  | 159d |  |  | 72h |  |
| 156 | 1.4.4.18.13.1 | GUI - поиск. Проектирование | 4d | 2013-10-01 | 2013-10-04 | 153 |  |  | 159d | 0d | Денис Митавский [50%] | 16h |  |
| 157 | 1.4.4.18.13.2 | GUI - поиск. Реализация | 7d | 2013-10-07 | 2013-10-15 | 156 |  |  | 159d |  | Андрей Карандей | 56h |  |
| 158 | 1.4.4.18.14 | **GUI - виджеты разработка** | 50d? | 2013-10-01 | 2013-12-09 |  |  |  | 120d |  |  | 808h |  |
| 159 | 1.4.4.18.14.1 | Дата/время | 1d? | 2013-10-01 | 2013-10-01 | 153 |  |  | 169d |  | Тимофей Билый | 8h |  |
| 160 | 1.4.4.18.14.2 | Остальные без особенностей стиля ст.лебедева (базовый набор) | 25d? | 2013-10-01 | 2013-11-04 | 153 |  |  | 120d | 0d | Тимофей Билый; Алексей Львов | 400h |  |
| 161 | 1.4.4.18.14.3 | Остальные для стиля ст.лебедева | 25d? | 2013-11-05 | 2013-12-09 | 160 |  |  | 120d |  | Андрей Карандей; Алексей Львов | 400h |  |
| 162 | 1.4.4.18.15 | **GUI - брендинг, стилизация, темы** | 5d | 2013-11-05 | 2013-11-11 |  |  |  | 140d |  |  | 20h |  |
| 163 | 1.4.4.18.15.1 | Концепция | 5d | 2013-11-05 | 2013-11-11 | 156, 160 |  |  | 140d |  | Денис Митавский [50%] | 20h |  |
| 164 | 1.4.4.19 | Тестирование производительности | 25d | 2013-09-10 | 2013-10-14 | 146 |  |  | 162d |  | Денис Митавский; Валерий Мацукевич | 400h |  |
| 165 | 1.4.4.20 | **Дополнительные сервисы платформы** | 93d | 2013-08-28 | 2014-01-15 |  |  |  | 21.14d |  |  | 952h |  |
| 166 | 1.4.4.20.1 | Расширение функциональности DAO (требования CMJ4.1, базовые требования) | 30d | 2013-08-28 | 2013-10-08 | 36 |  |  | 21.14d | 0d | Валерий Мацукевич | 240h |  |
| 167 | 1.4.4.20.2 | Выделение конфигурации GUI в отдельные сущности, к изменению формата которых система не будет восприимчива | 9d | 2013-10-09 | 2013-10-21 | 166 |  |  | 21.14d | 0d | Валерий Мацукевич | 72h |  |
| 168 | 1.4.4.20.3 | Защита конфигурационных файлов от изменений | 5d | 2013-10-22 | 2013-10-28 | 167 |  |  | 21.14d | 0d | Валерий Мацукевич | 40h |  |
| 169 | 1.4.4.20.4 | Версионность/аудит | 8d | 2013-10-29 | 2013-11-07 | 168 |  |  | 21.14d | 0d | Валерий Мацукевич | 64h |  |
| 170 | 1.4.4.20.5 | Блокировки бизнес-объектов | 6d | 2013-11-08 | 2013-11-15 | 169 |  |  | 21.14d | 0d | Валерий Мацукевич | 48h |  |
| 171 | 1.4.4.20.6 | Описание структуры модуля Делопроизводство | 20d | 2013-09-10 | 2013-10-07 | 21, 15, 14, 65 |  |  | 87d | 4d | Владимир Панов | 160h |  |
| 172 | 1.4.4.20.7 | Уточнение состава и сроков работ | 2d | 2013-12-10 | 2013-12-11 | 131 |  |  | 120d |  | Андрей Пирожков; Денис Митавский; Тугушев Илья | 48h |  |
| 173 | 1.4.4.20.8 | Кросс-СУБД, поддержка Oracle | 15d | 2013-11-18 | 2013-12-06 | 170 |  |  | 21.14d | 0d | Валерий Мацукевич | 120h |  |
| 174 | 1.4.4.20.9 | SQL-trace | 5d | 2013-12-09 | 2013-12-13 | 173 |  |  | 103d | 0d | Влад Симоненко | 40h |  |
| 175 | 1.4.4.20.10 | Локализация (на уровне конфигурации) | 15d | 2013-12-16 | 2014-01-15 | 174 |  |  | 103d |  | Влад Симоненко | 120h |  |
| 176 | 1.4.4.21 | **Интеграция с системой управления учетными записями** | 14d | 2013-11-18 | 2013-12-05 | 170 |  |  | 124d |  |  | 56h |  |
| 177 | 1.4.4.21.1 | Интеграция с ActiveDirectory | 14d | 2013-11-18 | 2013-12-05 |  |  |  | 124d |  | Андрей Пирожков [50%] | 56h |  |
| 178 | 1.4.4.22 | **Расширение функций сервиса конфигурации** | 128d | 2013-07-09 A | 2014-01-14 | 173 | 32% | 86.86d | 89d |  |  | 352h | 72h |
| 179 | 1.4.4.22.1 | Расширяемость конфигурации | 12d | 2013-07-09 A | 2013-12-11 |  | 75% | 3d | 89d | 0d | Валерий Мацукевич | 96h | 72h |
| 180 | 1.4.4.22.2 | Изменение и дополнение конфигурации системы | 16d | 2013-12-12 | 2014-01-14 | 179 |  |  | 89d | 0d | Андрей Пирожков; Роман Митинков | 256h |  |

Notes:
- 164: - полноценное, продуманное, конфигурируемое, полностью автоматизированное (вплоть до промежуточного сбора статистики в СУБД перед запуском тестов производительности) с автоматической генерацией таблиц и графиков, с поддержкой нагружающих потоков и т.п.
- 169: История модификации объекта / Версионность - на бизнес слой
- 173: Кросс-СУБД, поддержка Oracle
- 175: Поддержка ресурсных файлов - в расках конфигурирования ресурсных файлов / Подмена языка в интерфейсе (передача локали пользоввателю) -

| ID | WBS | Task | Duration | Start | Finish | Predecessors | Complete | Remaining | Total slack | Free slack | Resources | Work | Actual work |
| --- | --- | --- | --- | --- | --- | --- | --- | --- | --- | --- | --- | --- | --- |
| 181 | 1.4.4.23 | **Сервис для работы с системным журналом** | 15d | 2014-01-15 | 2014-02-04 | 180 |  |  | 89d |  |  | 120h |  |
| 182 | 1.4.4.23.1 | Ведение журнала действий пользователей и действий с объектами системы | 10d | 2014-01-15 | 2014-01-28 |  |  |  | 89d | 0d | Андрей Карандей | 80h |  |
| 183 | 1.4.4.23.2 | Настройка уровня логирования | 5d | 2014-01-29 | 2014-02-04 | 182 |  |  | 89d |  | Андрей Карандей | 40h |  |
| 184 | 1.4.5 | **Разработка** | 209d | 2013-06-11 A | 2014-04-09 | 15 | 10% | 188.73d | 111d |  |  | 6676h | 686.4h |
| 185 | 1.4.5.1 | Контроль и корректировка технических решений "Архитектурный комитет" | 208d | 2013-06-11 A | 2014-04-09 |  | 28% | 150d | 111d |  | Тугушев Илья [20%]; Андрей Пирожков [20%]; Денис Митавский [20%]; WEB-дизайнер [20%]; Аналитик [20%]; Владимир Панов [50%] | 2436h | 686.4h |
| 186 | 1.4.5.2 | **Разработка серверной логики модуля CMJ** | 60d | 2013-10-14 | 2014-01-15 | 15, 44, 171 |  |  | 83d | 0d |  | 1920h |  |
| 187 | 1.4.5.2.1 | Разработка схем документов модуля CMJ | 40d | 2013-10-14 | 2013-12-06 |  |  |  | 83d | 0d | Андрей Пирожков [50%]; Влад Симоненко | 480h |  |
| 188 | 1.4.5.2.2 | Разработка ЖЦ процессов модуля (WF) | 20d | 2013-12-09 | 2014-01-15 | 187 |  |  | 83d | 0d | Влад Симоненко; Андрей Пирожков [50%] | 240h |  |
| 189 | 1.4.5.2.3 | Разработка логики бизнес- действий модуля CMJ | 60d | 2013-10-14 | 2014-01-15 |  |  |  | 83d | 0d | Алексей Львов; Андрей Пирожков [50%] | 720h |  |
| 190 | 1.4.5.2.4 | Разработка процессов автоматизации для модуля CMJ | 40d | 2013-10-14 | 2013-12-06 |  |  |  | 141d |  | Андрей Карандей | 320h |  |
| 191 | 1.4.5.2.5 | Разработка модели прав доступа (контекстные роли) | 20d | 2013-12-09 | 2014-01-15 | 187 |  |  | 121d |  | Андрей Карандей | 160h |  |
| 192 | 1.4.5.3 | **Разработка Форм для АРМ тематических администраторов** | 40d | 2013-12-23 | 2014-02-27 | 70 |  |  | 140.75d |  |  | 960h |  |
| 193 | 1.4.5.3.1 | **Подготовка работы со списками значений** | 40d | 2013-12-23 | 2014-02-27 |  |  |  | 140.75d |  |  | 640h |  |
| 194 | 1.4.5.3.1.1 | Разработка функционала учета организационно штатной структуры | 40d | 2013-12-23 | 2014-02-17 |  |  |  | 140.75d |  | Андрей Цветков | 320h |  |
| 195 | 1.4.5.3.1.2 | Разработка функционала с рубрикаторами (сложные справочники) | 20d | 2013-12-23 | 2014-01-30 |  |  |  | 140.75d | 0d | Валерий Мацукевич | 160h |  |
| 196 | 1.4.5.3.1.3 | Разработка функционала для работы с словарями данных (простые, линейные справочники) | 20d | 2014-01-30 | 2014-02-27 | 195 |  |  | 140.75d |  | Валерий Мацукевич | 160h |  |
| 197 | 1.4.5.3.2 | Разработка форм для работы в GUI (настройки форм) | 15d | 2013-12-23 | 2014-01-23 |  |  |  | 160.75d | 0d | Java разработчик3 | 120h |  |
| 198 | 1.4.5.3.3 | Разработка структуры рабочего места АРМ | 5d | 2014-01-23 | 2014-01-30 | 187, 197 |  |  | 160.75d |  | Java разработчик3 | 40h |  |
| 199 | 1.4.5.3.4 | Разработка специфичных для форм АРМ элементов GUI | 20d | 2013-12-23 | 2014-01-30 |  |  |  | 160.75d |  | Java разработчик4 | 160h |  |
| 200 | 1.4.5.4 | Подготовка отчетов | 40d | 2014-01-16 | 2014-03-12 | 187, 189, 188, 74 |  |  | 83d | 0d | Влад Симоненко; Алексей Львов; Андрей Карандей | 960h |  |
| 201 | 1.4.5.5 | Сопряжение с мобильным клиентом СМ4 | 50d | 2014-01-16 | 2014-03-26 | 186 |  |  | 121d |  | Java разработчик3 | 400h |  |
| 202 | 1.4.6 | **Тестирование** | 74d? | 2014-02-05 | 2014-05-19 | 20 |  |  | 83d | 0d |  | 2544h |  |
| 203 | 1.4.6.1 | **Функциональное тестирование** | 59d? | 2014-02-05 | 2014-04-28 |  |  |  | 89d |  |  | 2224h |  |
| 204 | 1.4.6.1.1 | Подготовка ПМИ | 5d | 2014-02-05 | 2014-02-11 |  |  |  | 89d | 0d | Тест Аналитик | 40h |  |
| 205 | 1.4.6.1.2 | Разработка "сценариев тестирования" | 15d | 2014-02-05 | 2014-02-25 |  |  |  | 94d | 6d | Тест Аналитик | 120h |  |
| 206 | 1.4.6.1.3 | Разработка модели нагрузки для тестирования | 10d | 2014-02-12 | 2014-02-25 | 204 |  |  | 94d | 6d | Тест Аналитик | 80h |  |
| 207 | 1.4.6.1.4 | Адаптация автоматизированных сценариев от СМ4 для создания нагрузки | 25d | 2014-02-12 | 2014-03-18 | 204 |  |  | 89d | 6d | Влад Симоненко | 200h |  |

Notes:
- 181: Сервис для работы с системным журналомВедение журнала действий пользователей и действий с объектами системы
- 182: Ведение журнала действий пользователей и действий с объектами системы

| ID | WBS | Task | Type | Duration | Start | Finish | Predecessors | Total slack | Free slack | Constraint | Resources | Work |
| --- | --- | --- | --- | --- | --- | --- | --- | --- | --- | --- | --- | --- |
| 208 | 1.4.6.1.5 | **Проведение тестирования** |  | 38d? | 2014-03-06 | 2014-04-28 | 205, 206 | 88d |  |  |  | 1784h |
| 209 | 1.4.6.1.5.1 | **Подготовка среды тестирования** |  | 15d? | 2014-03-06 | 2014-03-26 |  | 88d |  |  |  | 200h |
| 210 | 1.4.6.1.5.1.1 | Разворачивание системы |  | 5d? | 2014-03-06 | 2014-03-13 | 212SF | 131d | 0d |  | Влад Симоненко | 40h |
| 211 | 1.4.6.1.5.1.2 | Система готова для подключения инструментов мониторинга | milestone | 0d | 2014-03-13 | 2014-03-13 | 210 | 131d |  |  |  |  |
| 212 | 1.4.6.1.5.1.3 | Наполнение данными |  | 10d? | 2014-03-13 | 2014-03-26 | 200 | 83d | 0d |  | Влад Симоненко; Java разработчик6 | 160h |
| 213 | 1.4.6.1.5.2 | Среда тестирования готова | milestone | 0d | 2014-03-26 | 2014-03-26 | 212, 207 | 83d | 0d | start no earlier than 2012-05-24 |  |  |
| 214 | 1.4.6.1.5.3 | Проведение тестирования |  | 10d | 2014-03-27 | 2014-04-09 | 213 | 83d | 0d |  | Тест Аналитик; Тестировщик [200%] | 240h |
| 215 | 1.4.6.1.5.4 | **Обработка результатов тестирования и внесение изменений в модуль** |  | 15d | 2014-04-08 | 2014-04-28 | 214FS-2d | 83d |  |  |  | 1344h |
| 216 | 1.4.6.1.5.4.1 | Устранение замечаний по результатам функционального тестирования |  | 15d | 2014-04-08 | 2014-04-28 |  | 83d | 0d |  | Java разработчик5; Влад Симоненко [300%]; Валерий Мацукевич; Java разработчик3; Java разработчик4; Андрей Карандей; Алексей Львов; Андрей Цветков | 1200h |
| 217 | 1.4.6.1.5.4.2 | Проверка устранения замечаний |  | 6d | 2014-04-21 | 2014-04-28 | 216FS-6d | 83d | 0d |  | Тест Аналитик; Тестировщик [200%] | 144h |
| 218 | 1.4.6.2 | **Нагрузочное тестирование** |  | 28d | 2014-04-09 | 2014-05-19 | 204 | 83d |  |  |  | 320h |
| 219 | 1.4.6.2.1 | Стенд для нагрузочного тестирования подготовлен | milestone | 0d | 2014-04-09 | 2014-04-09 | 214 | 96d | 13d | finish no earlier than 2012-06-09 |  |  |
| 220 | 1.4.6.2.2 | Проведения нагрузочного тестирования |  | 10d | 2014-04-29 | 2014-05-12 | 217, 207, 219 | 83d | 0d |  | Влад Симоненко; Тест Аналитик; Тестировщик | 240h |
| 221 | 1.4.6.2.3 | Обработка результатов нагрузочного тестирования |  | 5d | 2014-05-13 | 2014-05-19 | 220 | 83d |  |  | Тест Аналитик; Тестировщик | 80h |
| 222 | 1.4.7 | **Подготовка документации** |  | 80d | 2014-02-05 | 2014-05-27 | 202SS | 77d |  |  |  | 640h |
| 223 | 1.4.7.1 | Разработка документа "Концепция системы " |  | 40d | 2014-02-05 | 2014-04-01 |  | 77d | 0d |  | Владимир Панов | 320h |
| 224 | 1.4.7.2 | Разработка "Software Architecture Document" |  | 40d | 2014-04-02 | 2014-05-27 | 223 | 77d | 0d |  | Владимир Панов | 320h |
| 225 | 1.4.7.3 | Документы подготовлены | milestone | 0d | 2014-05-27 | 2014-05-27 | 224 | 77d |  |  |  |  |
